# projeto controle de livraria

Schedule from MS Project, 2020-06-05 to 2020-07-09, costs in R$.

## Calendars

- Padrão: Mon-Fri 09:00-12:00, 13:00-18:00; Sat-Sun off.

## Resources

| Resource | Rate |
| --- | --- |
| Breno | 150 |
| Lucas | 150 |
| Cliente |  |
| Douglas | 150 |

## Schedule

| ID | WBS | Task | Type | Duration | Start | Finish | Predecessors | Total slack | Free slack | Resources | Work | Cost |
| --- | --- | --- | --- | --- | --- | --- | --- | --- | --- | --- | --- | --- |
| 1 | 1 | **Projeto Controle de Livraria** |  | 23.85d | 2020-06-05 15:00 | 2020-07-09 13:50 |  | 0d |  |  | 435h | 60,750 |
| 2 | 1.1 | **Prospecçâo** |  | 8.31d | 2020-06-05 15:00 | 2020-06-17 17:30 |  | 0d |  |  | 25h | 3,750 |
| 3 | 1.1.1 | **PTEC** |  | 3.31d | 2020-06-05 15:00 | 2020-06-10 17:30 |  | 0d |  |  | 14h | 2,100 |
| 4 | 1.1.1.1 | Estudar domínio de aplicação |  | 0.38d | 2020-06-05 15:00 | 2020-06-05 18:00 |  | 0d |  | Breno | 3h | 450 |
| 5 | 1.1.1.2 | Reunir-se com fornecedor de requisitos |  | 0.38d | 2020-06-08 09:00 | 2020-06-08 12:00 | 4 | 0d |  | Breno | 3h | 450 |
| 6 | 1.1.1.3 | Redigir PTEC |  | 0.62d | 2020-06-08 13:00 | 2020-06-10 11:00 | 5 | 0d |  | Breno | 5h | 750 |
| 7 | 1.1.1.4 | Revisar proposta técnica |  | 0.31d | 2020-06-10 11:00 | 2020-06-10 17:30 | 6 | 0d |  | Lucas; Douglas | 3h | 450 |
| 8 | 1.1.1.5 | Aprovar PTEC | milestone | 0d | 2020-06-10 17:30 | 2020-06-10 17:30 | 7 | 5d |  | Cliente |  |  |
| 9 | 1.1.2 | **Estimativa de tamanho preliminar** |  | 3.81d | 2020-06-10 17:30 | 2020-06-16 16:00 |  | 0d |  |  | 6h | 900 |
| 10 | 1.1.2.1 | Estimar tamanho do projeto |  | 0.62d | 2020-06-10 17:30 | 2020-06-11 14:30 | 7 | 0d |  | Douglas | 5h | 750 |
| 11 | 1.1.2.2 | Revisar estimativa do tamanho do projeto |  | 0.12d | 2020-06-11 14:30 | 2020-06-16 16:00 | 10 | 0d |  | Breno; Lucas | 1h | 150 |
| 12 | 1.1.3 | **Estimativa preliminar de cronograma e orçcamento** |  | 1.19d | 2020-06-16 16:00 | 2020-06-17 17:30 |  | 0d |  |  | 5h | 750 |
| 13 | 1.1.3.1 | Elaborar cronograma e orçamento preliminares |  | 0.5d | 2020-06-16 16:00 | 2020-06-17 17:00 | 9 | 0d |  | Douglas | 4h | 600 |
| 14 | 1.1.3.2 | Revisar cronograma e orçamento preliminares |  | 0.06d | 2020-06-17 17:00 | 2020-06-17 17:30 | 13 | 0d |  | Lucas; Breno | 1h | 150 |
| 15 | 1.2 | **Análise** |  | 3.88d | 2020-06-17 17:30 | 2020-06-23 16:30 | 2 | 0d |  |  | 64h | 9,600 |
| 16 | 1.2.1 | **Documento de requisitos** |  | 3.88d | 2020-06-17 17:30 | 2020-06-23 16:30 |  | 0d |  |  | 34h | 5,100 |
| 17 | 1.2.1.1 | Reunir-se com o cliente |  | 0.38d | 2020-06-17 17:30 | 2020-06-18 11:30 |  | 0d |  | Breno; Douglas | 6h | 900 |
| 18 | 1.2.1.2 | Elaborar documento de requisitos |  | 1.25d | 2020-06-18 11:30 | 2020-06-19 14:30 | 17 | 0d |  | Breno; Douglas | 20h | 3,000 |
| 19 | 1.2.1.3 | Revisar documento de requisitos |  | 1d | 2020-06-22 16:30 | 2020-06-23 16:30 | 18 | 0d |  | Lucas | 8h | 1,200 |
| 20 | 1.2.1.4 | Aprovar documento de requisitos | milestone | 0d | 2020-06-23 16:30 | 2020-06-23 16:30 | 19 | 0d |  | Cliente |  |  |
| 21 | 1.2.2 | **MRB** |  | 3.12d | 2020-06-18 11:30 | 2020-06-23 13:30 |  | 0.38d |  |  | 30h | 4,500 |
| 22 | 1.2.2.1 | Elaborar MRB |  | 2.5d | 2020-06-18 11:30 | 2020-06-22 16:30 | 17 | 0.38d | 0d | Lucas | 20h | 3,000 |
| 23 | 1.2.2.2 | Revisar MRB |  | 0.62d | 2020-06-22 16:30 | 2020-06-23 13:30 | 22 | 0.38d |  | Douglas; Breno | 10h | 1,500 |
| 24 | 1.3 | **Projeto** |  | 0.84d | 2020-06-23 16:30 | 2020-06-24 15:15 | 15 | 0d |  |  | 16h | 2,400 |
| 25 | 1.3.1 | **Diagramas de classes** |  | 0.84d | 2020-06-23 16:30 | 2020-06-24 15:15 |  | 0d |  |  | 9h | 1,350 |
| 26 | 1.3.1.1 | Elaborar Diagrama de classes |  | 0.62d | 2020-06-23 16:30 | 2020-06-24 13:30 | 15 | 0d |  | Breno | 5h | 750 |
| 27 | 1.3.1.2 | Revisar Diagrama de classes |  | 0.19d | 2020-06-24 13:30 | 2020-06-24 15:15 | 26 | 0d |  | Lucas; Douglas | 1.5h | 225 |
| 28 | 1.3.1.3 | Atualizar MRB |  | 0.31d | 2020-06-23 16:30 | 2020-06-24 10:00 | 21 | 0.53d |  | Lucas | 2.5h | 375 |

| ID | WBS | Task | Type | Duration | Start | Finish | Predecessors | Total slack | Free slack | Resources | Work | Cost |
| --- | --- | --- | --- | --- | --- | --- | --- | --- | --- | --- | --- | --- |
| 29 | 1.3.2 | **Modelo de entidade relacional** |  | 0.81d | 2020-06-23 16:30 | 2020-06-24 15:00 |  | 0.03d |  |  | 7h | 1,050 |
| 30 | 1.3.2.1 | Elaborar MER |  | 0.75d | 2020-06-23 16:30 | 2020-06-24 14:30 | 15 | 0.03d | 0d | Douglas | 6h | 900 |
| 31 | 1.3.2.2 | Revisar MER |  | 0.06d | 2020-06-24 14:30 | 2020-06-24 15:00 | 30 | 0.03d |  | Lucas; Breno | 1h | 150 |
| 32 | 1.4 | **Planejamento** |  | 2.88d | 2020-06-24 15:15 | 2020-06-29 14:15 | 24 | 0d |  |  | 25h | 3,750 |
| 33 | 1.4.1 | Divisão dos times de desenvolvimento |  | 0.5d | 2020-06-25 14:15 | 2020-06-26 09:15 | 24 | 1.5d |  | Breno | 4h | 600 |
| 34 | 1.4.2 | Definir linguagem/frameworks a serem utilizados |  | 1.38d | 2020-06-24 15:15 | 2020-06-26 13:15 | 24 | 0d |  | Breno; Douglas; Lucas | 12h | 1,800 |
| 35 | 1.4.3 | **Definir padrão de interface e usabilidade** |  | 1d | 2020-06-26 13:15 | 2020-06-29 13:15 |  | 0d |  |  | 8h | 1,200 |
| 36 | 1.4.3.1 | Montar Mockup de interface |  | 0.75d | 2020-06-26 13:15 | 2020-06-29 10:15 | 34 | 0d |  | Breno | 6h | 900 |
| 37 | 1.4.3.2 | Reunir-se com o cliente |  | 0.25d | 2020-06-29 10:15 | 2020-06-29 13:15 | 36 | 0d |  | Breno | 2h | 300 |
| 38 | 1.4.3.3 | Aprovar Interface | milestone | 0d | 2020-06-29 13:15 | 2020-06-29 13:15 | 37 | 0d |  | Cliente |  |  |
| 39 | 1.4.4 | Iniciar repositório para controle de versionamento |  | 0.12d | 2020-06-29 13:15 | 2020-06-29 14:15 | 38 | 0d |  | Breno | 1h | 150 |
| 40 | 1.5 | **Desenvolvimento** |  | 7.95d | 2020-06-29 14:15 | 2020-07-09 13:50 | 32 | 0d |  |  | 250h | 37,500 |
| 41 | 1.5.1 | **Release 00** |  | 5.25d | 2020-06-29 14:15 | 2020-07-06 16:15 |  | 0d |  |  | 180h | 27,000 |
| 42 | 1.5.1.1 | **Implementação** |  | 4.75d | 2020-06-29 14:15 | 2020-07-06 11:15 |  | 0d |  |  | 133h | 19,950 |
| 43 | 1.5.1.1.1 | Implementar [RFS01] |  | 1.25d | 2020-06-29 14:15 | 2020-06-30 16:15 | 32 | 0.22d | 0d | Breno | 10h | 1,500 |
| 44 | 1.5.1.1.2 | Implementar [RFS02] |  | 0.75d | 2020-06-30 16:15 | 2020-07-01 14:15 | 43 | 2.12d | 0d | Breno | 6h | 900 |
| 45 | 1.5.1.1.3 | Implementar [RFS03] |  | 0.62d | 2020-06-30 16:15 | 2020-07-01 13:15 | 43 | 2.25d | 0d | Breno | 5h | 750 |
| 46 | 1.5.1.1.4 | Implementar [RFS04] |  | 0.5d | 2020-07-02 11:15 | 2020-07-03 10:15 | 43 | 0.5d | 0d | Breno | 4h | 600 |
| 47 | 1.5.1.1.5 | Implementar [RFS05] |  | 1.25d | 2020-06-29 14:15 | 2020-06-30 16:15 | 32 | 2d | 0d | Douglas | 10h | 1,500 |
| 48 | 1.5.1.1.6 | Implementar [RFS06] |  | 0.62d | 2020-06-30 16:15 | 2020-07-01 13:15 | 47 | 2.25d | 0d | Douglas | 5h | 750 |
| 49 | 1.5.1.1.7 | Implementar [RFS07] |  | 0.62d | 2020-06-30 16:15 | 2020-07-01 13:15 | 47 | 2.25d | 0d | Douglas | 5h | 750 |
| 50 | 1.5.1.1.8 | Implementar [RFS08] |  | 0.5d | 2020-06-30 16:15 | 2020-07-01 11:15 | 47 | 2.38d | 0d | Douglas | 4h | 600 |
| 51 | 1.5.1.1.9 | Implementar [RFS09] |  | 1.25d | 2020-06-29 14:15 | 2020-06-30 16:15 | 32 | 0d |  | Lucas | 10h | 1,500 |
| 52 | 1.5.1.1.10 | Implementar [RFS10] |  | 0.75d | 2020-06-30 16:15 | 2020-07-01 14:15 | 51 | 2.12d | 0d | Lucas | 6h | 900 |
| 53 | 1.5.1.1.11 | Implementar [RFS11] |  | 0.62d | 2020-06-30 16:15 | 2020-07-01 13:15 | 51 | 2.25d | 0d | Lucas | 5h | 750 |
| 54 | 1.5.1.1.12 | Implementar [RFS12] |  | 0.5d | 2020-06-30 16:15 | 2020-07-01 11:15 | 51 | 2.38d | 0d | Lucas | 4h | 600 |
| 55 | 1.5.1.1.13 | Implementar [RFS13] |  | 1.25d | 2020-06-30 16:15 | 2020-07-02 09:15 | 43 | 0.97d | 0d | Lucas | 10h | 1,500 |
| 56 | 1.5.1.1.14 | Implementar [RFS14] |  | 0.62d | 2020-07-02 09:15 | 2020-07-02 15:15 | 55 | 1d | 0d | Lucas | 5h | 750 |
| 57 | 1.5.1.1.15 | Implementar [RFS15] |  | 0.62d | 2020-07-02 15:15 | 2020-07-03 11:15 | 55 | 0.38d | 0d | Lucas | 5h | 750 |
| 58 | 1.5.1.1.16 | Implementar [RFS16] |  | 0.5d | 2020-07-02 09:15 | 2020-07-02 14:15 | 55 | 1.12d | 0d | Lucas | 4h | 600 |
| 59 | 1.5.1.1.17 | Implementar [RFS17] |  | 1.5d | 2020-06-30 16:15 | 2020-07-02 11:15 | 43, 51 | 1.38d | 0d | Breno | 12h | 1,800 |
| 60 | 1.5.1.1.18 | Implementar [RFS18] |  | 1d | 2020-06-30 16:15 | 2020-07-01 16:15 | 43 | 1.88d | 0d | Douglas | 8h | 1,200 |
| 61 | 1.5.1.1.19 | Implementar [RNF01] |  | 0.88d | 2020-06-30 16:15 | 2020-07-01 15:15 | 47, 51 | 2d | 0d | Douglas | 7h | 1,050 |
| 62 | 1.5.1.1.20 | Implementar [RNF02] |  | 0.62d | 2020-07-03 15:15 | 2020-07-06 11:15 | 43, 44, 45, 46, 47, 48, 49, 50, 51, 52, 53, 54, 55, 56, 57, 58, 59, 60, 61, 63 | 0d |  | Douglas | 5h | 750 |
| 63 | 1.5.1.1.21 | Implementar [RNF03] |  | 0.38d | 2020-07-03 11:15 | 2020-07-03 15:15 | 51 | 0d |  | Lucas | 3h | 450 |

| ID | WBS | Task | Type | Duration | Start | Finish | Predecessors | Total slack | Resources | Work | Cost |
| --- | --- | --- | --- | --- | --- | --- | --- | --- | --- | --- | --- |
| 64 | 1.5.1.2 | **Teste** |  | 4d | 2020-06-30 16:15 | 2020-07-06 16:15 |  | 0d |  | 47h | 7,050 |
| 65 | 1.5.1.2.1 | Testar [RFS01] |  | 0.25d | 2020-06-30 16:15 | 2020-07-01 09:15 | 43 | 3.75d | Lucas | 2h | 300 |
| 66 | 1.5.1.2.2 | Testar [RFS02] |  | 0.25d | 2020-07-03 15:15 | 2020-07-03 17:15 | 44 | 0.88d | Lucas | 2h | 300 |
| 67 | 1.5.1.2.3 | Testar [RFS03] |  | 0.25d | 2020-07-01 13:15 | 2020-07-01 15:15 | 45 | 3.12d | Lucas | 2h | 300 |
| 68 | 1.5.1.2.4 | Testar [RFS04] |  | 0.25d | 2020-07-03 10:15 | 2020-07-03 13:15 | 46 | 1.38d | Lucas | 2h | 300 |
| 69 | 1.5.1.2.5 | Testar [RFS05] |  | 0.25d | 2020-07-03 10:15 | 2020-07-03 13:15 | 47 | 1.38d | Breno | 2h | 300 |
| 70 | 1.5.1.2.6 | Testar [RFS06] |  | 0.25d | 2020-07-01 13:15 | 2020-07-01 15:15 | 48 | 3.12d | Breno | 2h | 300 |
| 71 | 1.5.1.2.7 | Testar [RFS07] |  | 0.25d | 2020-07-01 13:15 | 2020-07-01 15:15 | 49 | 3.12d | Breno | 2h | 300 |
| 72 | 1.5.1.2.8 | Testar [RFS08] |  | 0.25d | 2020-07-01 11:15 | 2020-07-01 14:15 | 50 | 3.25d | Breno | 2h | 300 |
| 73 | 1.5.1.2.9 | Testar [RFS09] |  | 0.25d | 2020-06-30 16:15 | 2020-07-01 09:15 | 51 | 3.75d | Douglas | 2h | 300 |
| 74 | 1.5.1.2.10 | Testar [RFS10] |  | 0.25d | 2020-07-01 16:15 | 2020-07-02 09:15 | 52 | 2.75d | Douglas | 2h | 300 |
| 75 | 1.5.1.2.11 | Testar [RFS11] |  | 0.25d | 2020-07-01 13:15 | 2020-07-01 15:15 | 53 | 3.12d | Douglas | 2h | 300 |
| 76 | 1.5.1.2.12 | Testar [RFS12] |  | 0.25d | 2020-07-01 11:15 | 2020-07-01 14:15 | 54 | 3.25d | Douglas | 2h | 300 |
| 77 | 1.5.1.2.13 | Testar [RFS13] |  | 0.25d | 2020-07-02 09:15 | 2020-07-02 11:15 | 55 | 2.5d | Breno | 2h | 300 |
| 78 | 1.5.1.2.14 | Testar [RFS14] |  | 0.25d | 2020-07-02 15:15 | 2020-07-02 17:15 | 56 | 1.88d | Breno | 2h | 300 |
| 79 | 1.5.1.2.15 | Testar [RFS15] |  | 0.25d | 2020-07-03 11:15 | 2020-07-03 14:15 | 57 | 1.25d | Breno | 2h | 300 |
| 80 | 1.5.1.2.16 | Testar [RFS16] |  | 0.25d | 2020-07-02 14:15 | 2020-07-03 15:15 | 58 | 1.12d | Breno | 2h | 300 |
| 81 | 1.5.1.2.17 | Testar [RFS17] |  | 0.25d | 2020-07-02 11:15 | 2020-07-02 14:15 | 59 | 2.25d | Lucas | 2h | 300 |
| 82 | 1.5.1.2.18 | Testar [RFS18] |  | 0.25d | 2020-07-01 16:15 | 2020-07-02 09:15 | 60 | 2.75d | Breno | 2h | 300 |
| 83 | 1.5.1.2.19 | Testar [RNF01] |  | 0.5d | 2020-07-01 15:15 | 2020-07-02 10:15 | 61 | 2.62d | Breno | 4h | 600 |
| 84 | 1.5.1.2.20 | Testar [RNS02] |  | 0.5d | 2020-07-06 11:15 | 2020-07-06 16:15 | 62 | 0d | Lucas | 4h | 600 |
| 85 | 1.5.1.2.21 | Testar [RNF03] |  | 0.38d | 2020-07-03 15:15 | 2020-07-06 09:15 | 63 | 0.75d | Breno | 3h | 450 |
| 86 | 1.5.2 | Avaliação do cliente | milestone | 0d | 2020-07-06 16:15 | 2020-07-06 16:15 | 64 | 0d | Cliente |  |  |
| 87 | 1.5.3 | Redigir relatório de não-conformidade |  | 0.42d | 2020-07-06 16:15 | 2020-07-09 13:50 | 86 | 0d | Breno; Lucas; Douglas | 10h | 1,500 |

| ID | WBS | Task | Duration | Start | Finish | Predecessors | Total slack | Free slack | Resources | Work | Cost |
| --- | --- | --- | --- | --- | --- | --- | --- | --- | --- | --- | --- |
| 88 | 1.5.4 | **Release 01** | 2.5d | 2020-07-06 16:15 | 2020-07-09 11:15 |  | 0.2d |  |  | 60h | 9,000 |
| 89 | 1.5.4.1 | **Implementação** | 2.08d | 2020-07-06 16:15 | 2020-07-08 16:55 |  | 0.2d |  |  | 50h | 7,500 |
| 90 | 1.5.4.1.1 | Correção de bugs de acordo com o relatório de não conformidade da Release 00 | 2.08d | 2020-07-06 16:15 | 2020-07-08 16:55 | 41 | 0.2d | 0d | Breno; Lucas; Douglas | 50h | 7,500 |
| 91 | 1.5.4.2 | **Teste** | 0.42d | 2020-07-08 16:55 | 2020-07-09 11:15 |  | 0.2d |  |  | 10h | 1,500 |
| 92 | 1.5.4.2.1 | Validação da correção dos bugs | 0.42d | 2020-07-08 16:55 | 2020-07-09 11:15 | 90 | 0.2d |  | Breno; Lucas; Douglas | 10h | 1,500 |
| 93 | 1.6 | **Monitoramento e controle** | 1.25d | 2020-06-24 15:15 | 2020-06-25 17:15 | 2, 15, 24 | 3.57d | 0d |  | 25h | 3,750 |
| 94 | 1.6.1 | Acompanhamento do projeto | 0.38d | 2020-06-24 15:15 | 2020-06-25 09:15 |  | 4.45d |  | Breno | 3h | 450 |
| 95 | 1.6.2 | Atualizações de bibliotecas utilizadas e protocolos | 0.88d | 2020-06-24 15:15 | 2020-06-25 14:15 |  | 3.95d |  | Lucas | 7h | 1,050 |
| 96 | 1.6.3 | Elucidar requisitos demandados pelo cliente em relases | 0.62d | 2020-06-24 15:15 | 2020-06-25 11:15 |  | 4.2d |  | Breno | 5h | 750 |
| 97 | 1.6.4 | Refatoração de código | 1.25d | 2020-06-24 15:15 | 2020-06-25 17:15 |  | 3.57d |  | Douglas | 10h | 1,500 |
| 98 | 1.7 | Fechamento | 2d | 2020-06-25 17:15 | 2020-06-29 17:15 | 93 | 3.57d | 0d |  | 10h |  |
| 99 | 1.8 | Controle de mudanças | 4d | 2020-06-29 17:15 | 2020-07-03 17:15 | 98 | 3.57d |  |  | 20h |  |
